# 集控III区高级应用

Schedule from a web Gantt chart, 2024-05-06 to 2025-06-30.
Saturdays and Sundays are off

## Schedule

| ID | WBS | Task | Duration | Start | Finish | Complete | Status | inPeople |
| --- | --- | --- | --- | --- | --- | --- | --- | --- |
| 2 | 1 | **一期** | 129d | 2024-05-06 | 2024-10-31 | 2% |  |  |
| 3 | 1.1 | **V0.1 架构搭建与需求梳理** | 5d | 2024-05-06 | 2024-05-10 | 100% | done |  |
| 4 | 1.1.1 | **架构搭建** | 5d | 2024-05-06 | 2024-05-10 | 100% | done | 王思威,刘祖勉 |
| 5 | 1.1.1.1 | 后端架构搭建 | 1d | 2024-05-06 | 2024-05-06 | 100% | done | 王思威 |
| 6 | 1.1.1.2 | 前端架构搭建 | 1d | 2024-05-10 | 2024-05-10 | 100% | done | 刘祖勉 |
| 7 | 1.1.2 | 需求梳理 | 2d | 2024-05-09 | 2024-05-10 | 100% | done | 黄炎峰 |
| 8 | 1.2 | **V1.1.0 实时监视模块(区域监视) 系统管理 与组件迁移** | 10d | 2024-05-13 | 2024-05-24 |  |  |  |
| 9 | 1.2.1 | 需求评审 | 1d | 2024-05-13 | 2024-05-13 |  |  | 黄炎峰 |
| 10 | 1.2.2 | UI设计 | 8d | 2024-05-13 | 2024-05-22 |  |  | 黄书雅 |
| 11 | 1.2.3 | 前端开发 | 8d | 2024-05-13 | 2024-05-22 |  |  | 韦泉助, 刘祖勉, 刘美坤 |
| 12 | 1.2.4 | 后端开发 | 8d | 2024-05-13 | 2024-05-22 |  |  | 王思威, 周靖, 祁心怡, 代德国, 刘家宏 |
| 13 | 1.2.5 | 测试 | 2d | 2024-05-23 | 2024-05-24 |  |  | 张艳杰 |
| 14 | 1.2.6 | V1.1.1 需求设计 | 8d | 2024-05-13 | 2024-05-22 |  | waiting | 黄炎峰 |
| 15 | 1.2.7 | V1.1.1 需求评审 | 1d | 2024-05-23 | 2024-05-23 |  | waiting | 黄炎峰 |
| 16 | 1.2.8 | V1.1.1 UI设计 | 2d | 2024-05-23 | 2024-05-24 |  | waiting | 黄书雅 |
| 17 | 1.3 | **V1.1.1 实时监视 场站监视+设备监视(页面功能)+智能监盘(页面开发)** | 10d | 2024-05-27 | 2024-06-07 |  | waiting |  |
| 18 | 1.3.1 | UI设计 | 5d | 2024-05-27 | 2024-05-31 |  | waiting | 黄书雅 |
| 19 | 1.3.2 | 前端开发 | 8d | 2024-05-27 | 2024-06-05 |  | waiting |  |
| 20 | 1.3.3 | 后端开发 | 8d | 2024-05-27 | 2024-06-05 |  | waiting |  |
| 21 | 1.3.4 | 测试 | 2d | 2024-06-06 | 2024-06-07 |  | waiting | 张艳杰 |
| 22 | 1.3.5 | V1.1.2 需求设计 | 8d | 2024-05-27 | 2024-06-05 |  | waiting | 黄炎峰 |
| 23 | 1.3.6 | V1.1.2 需求评审 | 1d | 2024-06-06 | 2024-06-06 |  | waiting | 黄炎峰 |
| 24 | 1.3.7 | V1.1.2 UI设计 | 2d | 2024-06-06 | 2024-06-07 |  | waiting | 黄书雅 |
| 25 | 1.4 | V1.1.2 运营中心开发 | 20d | 2024-06-10 | 2024-07-05 |  | waiting |  |
| 26 | 1.5 | V1.1.4 数据分析与健康管理(一期开发) + APP开发 | 20d | 2024-07-08 | 2024-08-02 |  | waiting |  |
| 27 | 1.6 | V1.1.6 3D可视化与告警中心(一期开发) + APP开发 | 20d | 2024-08-05 | 2024-08-30 |  | waiting |  |
| 28 | 1.7 | V1.1.8 运维检修中心 | 35d | 2024-09-02 | 2024-10-18 |  | waiting |  |
| 29 | 1.8 | V1.1.11 一期收尾 | 8d | 2024-10-21 | 2024-10-30 |  | waiting |  |
| 30 | 1.9 | 阶段评审 | 1d | 2024-10-31 | 2024-10-31 |  | waiting |  |

| ID | WBS | Task | Duration | Start | Finish | Status |
| --- | --- | --- | --- | --- | --- | --- |
| 31 | 2 | **二期** | 107d | 2024-11-01 | 2025-03-31 | waiting |
| 32 | 2.1 | V2.1.0 阶段评审修改与优化 | 11d | 2024-11-01 | 2024-11-15 | waiting |
| 33 | 2.2 | V2.1.2 智能监盘开发(后端+联调) + APP开发 | 20d | 2024-11-18 | 2024-12-13 | waiting |
| 34 | 2.3 | V2.1.4 数据分析与健康管理(二期开发) + APP开发 | 20d | 2024-12-16 | 2025-01-10 | waiting |
| 35 | 2.4 | V2.1.6 生产管理平台二次开发V1 + APP开发 | 25d | 2025-01-13 | 2025-02-14 | waiting |
| 36 | 2.5 | V2.1.8 生产管理平台二次开发V2 + APP开发 | 20d | 2025-02-17 | 2025-03-14 | waiting |
| 37 | 2.6 | V2.1.10 二期收尾 | 10d | 2025-03-17 | 2025-03-28 | waiting |
| 38 | 2.7 | 阶段评审 | 1d | 2025-03-31 | 2025-03-31 | waiting |
| 39 | 3 | **三期** | 65d | 2025-04-01 | 2025-06-30 | waiting |
| 40 | 3.1 | V3.1.0 阶段性评审修改与优化 | 22d | 2025-04-01 | 2025-04-30 | waiting |
| 41 | 3.2 | V3.1.2 持续优化迭代(功能优化, 移动端优化, 算法模型优化, 监盘规则以及监测协议支持) | 42d | 2025-05-01 | 2025-06-27 | waiting |
| 42 | 3.3 | 阶段评审 | 1d | 2025-06-30 | 2025-06-30 | waiting |

Notes:
- 34: 含元旦
- 35: 含过年
- 40: 含清明
- 41: 含五一
